# Projet Web

Schedule from MS Project, 2018-04-09 to 2018-04-18, 7 hours a day.

## Calendars

- Standard: Mon-Wed 08:30-12:30, 13:30-17:30; Thu 08:30-12:30; Fri 08:30-12:30, 13:30-17:30; Sat-Sun off.

## Resources

| Resource |
| --- |
| Nicolas |
| Pierre |
| Hugo |
| 3 |

## Schedule

| ID | WBS | Task | Type | Duration | Start | Finish | Predecessors | Total slack | Free slack | Constraint | Resources | Work |
| --- | --- | --- | --- | --- | --- | --- | --- | --- | --- | --- | --- | --- |
| 1 | 1 | **gestion de projet** |  | 4d | 2018-04-09 09:00 | 2018-04-13 09:00 |  | 0d |  |  |  | 22.2h |
| 2 | 1.1 | PBS |  | 1.11h | 2018-04-09 09:00 | 2018-04-09 10:06 |  | 0d |  | must start on 2018-04-09 09:00 | Nicolas [90%]; Pierre [90%]; Hugo [90%] | 2.9h |
| 3 | 1.2 | WBS |  | 2h | 2018-04-09 10:06 | 2018-04-09 12:06 | 2 | 1.54d | 0d |  | Nicolas [90%]; Pierre [90%]; Hugo [90%] | 5.4h |
| 4 | 1.3 | OBS |  | 3h | 2018-04-09 12:06 | 2018-04-10 17:06 | 3 | 5.09d | 0d |  | Pierre [90%]; Hugo [90%]; Nicolas [90%] | 2.7h |
| 5 | 1.4 | MS Project |  | 5h | 2018-04-09 12:06 | 2018-04-10 16:06 | 3 | 1.54d | 0d |  | Nicolas | 5h |
| 6 | 1.5 | PERT |  | 2h | 2018-04-10 17:06 | 2018-04-11 10:06 | 4 | 5.09d |  |  | Pierre | 2h |
| 7 | 1.6 | GANTT | milestone | 0h | 2018-04-10 16:06 | 2018-04-10 16:06 | 5 | 1.54d | 0d |  | Nicolas |  |
| 8 | 1.7 | Dossier de conception |  | 3.56d | 2018-04-09 09:00 | 2018-04-13 09:00 | 2SS, 9 | 3.53d |  |  | Pierre [10%]; Hugo [10%]; Nicolas [10%] | 4.2h |
| 9 | 2 | **BDD** |  | 1.52d | 2018-04-10 16:06 | 2018-04-12 09:43 | 7 | 1.54d | 0d |  |  | 10.8h |
| 10 | 2.1 | MCD |  | 2h | 2018-04-10 16:06 | 2018-04-11 09:06 |  | 2.2d | 0d |  | Nicolas [90%] | 1.8h |
| 11 | 2.2 | MPD |  | 1h | 2018-04-11 09:06 | 2018-04-11 10:06 | 10 | 2.2d | 0d |  | Nicolas [90%] | 0.9h |
| 12 | 2.3 | MLD |  | 2h | 2018-04-11 10:06 | 2018-04-11 12:06 | 11 | 2.2d | 0d |  | Nicolas [90%] | 1.8h |
| 13 | 2.4 | Jeu de donnée |  | 1h | 2018-04-11 12:06 | 2018-04-11 14:06 | 12 | 2.2d |  |  | Nicolas [90%] | 0.9h |
| 14 | 2.5 | Procédures stockées |  | 6h | 2018-04-10 16:06 | 2018-04-12 09:43 |  | 1.54d |  |  | Nicolas [90%] | 5.4h |
| 15 | 3 | **site** |  | 7.09d | 2018-04-09 12:06 | 2018-04-18 09:43 |  | 0d |  |  |  | 74.4h |
| 16 | 3.1 | **front end** |  | 4.77d | 2018-04-09 12:06 | 2018-04-16 09:30 |  | 2.32d |  |  |  | 22.4h |
| 17 | 3.1.1 | **modé** |  | 1d | 2018-04-09 12:06 | 2018-04-10 11:06 | 3 | 3.89d | 0d |  |  | 5.4h |
| 18 | 3.1.1.1 | inscription/connexion |  | 1h | 2018-04-09 12:06 | 2018-04-09 14:06 |  | 4.75d |  |  | Hugo [90%] | 0.9h |
| 19 | 3.1.1.2 | boutique |  | 1h | 2018-04-09 14:06 | 2018-04-09 15:06 |  | 4.6d |  |  | Hugo [90%] | 0.9h |
| 20 | 3.1.1.3 | pannier |  | 1h | 2018-04-09 15:06 | 2018-04-09 16:06 |  | 4.46d |  |  | Hugo [90%] | 0.9h |
| 21 | 3.1.1.4 | home |  | 1h | 2018-04-09 16:06 | 2018-04-09 17:06 |  | 4.32d |  |  | Hugo [90%] | 0.9h |
| 22 | 3.1.1.5 | events |  | 1h | 2018-04-10 09:06 | 2018-04-10 10:06 |  | 4.03d |  |  | Hugo [90%] | 0.9h |
| 23 | 3.1.1.6 | boîte à idée |  | 1h | 2018-04-10 10:06 | 2018-04-10 11:06 |  | 3.89d |  |  | Hugo [90%] | 0.9h |
| 24 | 3.1.2 | **réal** |  | 3.77d | 2018-04-10 11:06 | 2018-04-16 09:30 | 17 | 2.32d |  |  |  | 17h |
| 25 | 3.1.2.1 | inscription/connexion |  | 2h | 2018-04-11 17:00 | 2018-04-12 10:00 |  | 3.96d |  |  | Hugo | 2h |
| 26 | 3.1.2.2 | boutique |  | 5h | 2018-04-10 11:06 | 2018-04-12 10:30 |  | 3.89d |  |  | Hugo | 5h |
| 27 | 3.1.2.3 | pannier |  | 3h | 2018-04-11 14:00 | 2018-04-13 12:00 |  | 3.1d |  |  | Hugo | 3h |
| 28 | 3.1.2.4 | home |  | 2h | 2018-04-11 17:00 | 2018-04-13 14:30 |  | 2.89d |  |  | Hugo | 2h |
| 29 | 3.1.2.5 | events |  | 2h | 2018-04-11 17:00 | 2018-04-13 16:00 |  | 2.67d |  |  | Hugo | 2h |
| 30 | 3.1.2.6 | boîte à idée |  | 3h | 2018-04-11 17:00 | 2018-04-16 09:30 |  | 2.32d |  |  | Hugo | 3h |

| ID | WBS | Task | Duration | Start | Finish | Predecessors | Total slack | Free slack | Resources | Work |
| --- | --- | --- | --- | --- | --- | --- | --- | --- | --- | --- |
| 31 | 3.2 | **back end** | 5.52d | 2018-04-10 16:06 | 2018-04-18 09:43 |  | 0d |  |  | 52h |
| 32 | 3.2.1 | **interface de connexion** | 0.29d | 2018-04-16 13:43 | 2018-04-16 15:43 | 9 | 1.57d |  |  | 2h |
| 33 | 3.2.1.1 | check le nom d'utilisatur dans la BDD | 1h | 2018-04-16 13:43 | 2018-04-16 14:43 |  | 1.71d |  | Pierre | 1h |
| 34 | 3.2.1.2 | check le hash du MDP dans la BDD | 1h | 2018-04-16 14:43 | 2018-04-16 15:43 |  | 1.57d |  | Pierre | 1h |
| 35 | 3.2.2 | **interface d'inscription** | 0.57d | 2018-04-16 15:43 | 2018-04-17 10:43 | 9 | 1d |  |  | 4h |
| 36 | 3.2.2.1 | regex mdp | 1h | 2018-04-16 15:43 | 2018-04-16 16:43 |  | 1.43d |  | Pierre | 1h |
| 37 | 3.2.2.2 | check le nom d'utilisatur dans la BDD | 1h | 2018-04-16 16:43 | 2018-04-17 08:43 |  | 1.29d |  | Pierre | 1h |
| 38 | 3.2.2.3 | sauvegarder le hash du mdp dans la BDD | 1h | 2018-04-17 08:43 | 2018-04-17 09:43 |  | 1.14d |  | Pierre | 1h |
| 39 | 3.2.2.4 | savegarder le nom d'utilisateur et autres info dans la BDD | 1h | 2018-04-17 09:43 | 2018-04-17 10:43 |  | 1d |  | Pierre | 1h |
| 40 | 3.2.3 | **privilèges** | 3d | 2018-04-13 09:43 | 2018-04-17 15:43 |  | 0.43d |  |  | 4h |
| 41 | 3.2.3.1 | **BDE** | 0.14d | 2018-04-13 09:43 | 2018-04-13 10:43 |  | 3.14d |  |  | 1h |
| 42 | 3.2.3.1.1 | **Valider une idée** | 0.14d | 2018-04-13 09:43 | 2018-04-13 10:43 |  | 3.14d |  |  | 1h |
| 43 | 3.2.3.1.1.1 | réutiliser la fonction d'ajout | 1h | 2018-04-13 09:43 | 2018-04-13 10:43 | 75 | 3.14d | 0d | Pierre | 1h |
| 44 | 3.2.3.2 | **Salarié** | 0.43d | 2018-04-17 11:43 | 2018-04-17 15:43 | 70SS | 0.43d |  |  | 3h |
| 45 | 3.2.3.2.1 | **signaler** | 0.43d | 2018-04-17 11:43 | 2018-04-17 15:43 |  | 0.43d |  |  | 3h |
| 46 | 3.2.3.2.1.1 | image | 1h | 2018-04-17 11:43 | 2018-04-17 13:43 |  | 0.71d |  | Pierre | 1h |
| 47 | 3.2.3.2.1.2 | commentaire | 1h | 2018-04-17 13:43 | 2018-04-17 14:43 |  | 0.57d |  | Pierre | 1h |
| 48 | 3.2.3.2.1.3 | event | 1h | 2018-04-17 14:43 | 2018-04-17 15:43 |  | 0.43d |  | Pierre | 1h |
| 49 | 3.2.4 | **boite à idée** | 2.37d | 2018-04-10 16:06 | 2018-04-13 11:43 |  | 3.14d |  |  | 4h |
| 50 | 3.2.4.1 | **étudiant** | 0.29d | 2018-04-10 16:06 | 2018-04-11 09:06 |  | 4.94d |  |  | 2h |
| 51 | 3.2.4.1.1 | proposer une idée | 2h | 2018-04-10 16:06 | 2018-04-11 09:06 | 7 | 4.94d | 1.8d | Hugo | 2h |
| 52 | 3.2.4.2 | **BDE** | 0.29d | 2018-04-13 09:43 | 2018-04-13 11:43 |  | 3.14d |  |  | 2h |
| 53 | 3.2.4.2.1 | valider une idée | 2h | 2018-04-13 09:43 | 2018-04-13 11:43 | 43SS, 51 | 3.14d |  | Hugo | 2h |
| 54 | 3.2.5 | **boutique** | 3.36d | 2018-04-10 16:06 | 2018-04-16 10:36 |  | 2.16d |  |  | 18h |
| 55 | 3.2.5.1 | **étudiant** | 3.21d | 2018-04-10 16:06 | 2018-04-16 09:36 |  | 2.3d |  |  | 13h |
| 56 | 3.2.5.1.1 | **commander** | 1d | 2018-04-13 10:36 | 2018-04-16 09:36 | 9 | 2.3d |  |  | 5h |
| 57 | 3.2.5.1.1.1 | ajouter au panier | 2h | 2018-04-13 10:36 | 2018-04-13 13:36 |  | 3.02d |  | Nicolas | 2h |
| 58 | 3.2.5.1.1.2 | notifier le BDE | 1h | 2018-04-16 08:36 | 2018-04-16 09:36 |  | 2.3d |  | Nicolas | 1h |
| 59 | 3.2.5.1.1.3 | auto save le pannier | 2h | 2018-04-13 13:36 | 2018-04-13 15:36 |  | 2.73d |  | Nicolas | 2h |

| ID | WBS | Task | Duration | Start | Finish | Predecessors | Total slack | Free slack | Resources | Work |
| --- | --- | --- | --- | --- | --- | --- | --- | --- | --- | --- |
| 60 | 3.2.5.1.2 | **interface** | 1.56d | 2018-04-12 09:43 | 2018-04-16 08:36 |  | 2.44d |  |  | 5h |
| 61 | 3.2.5.1.2.1 | 3 best sellers | 2h | 2018-04-13 15:36 | 2018-04-16 08:36 | 9 | 2.44d |  | Nicolas | 2h |
| 62 | 3.2.5.1.2.2 | menu de recherche | 3h | 2018-04-12 09:43 | 2018-04-13 08:43 | 9 | 3.57d |  | Nicolas | 3h |
| 63 | 3.2.5.1.3 | paypal optionnel | 3h | 2018-04-10 16:06 | 2018-04-13 10:36 |  | 3.3d |  | Nicolas | 3h |
| 64 | 3.2.5.2 | **BDE** | 0.29d | 2018-04-16 08:36 | 2018-04-16 10:36 | 9 | 2.16d |  |  | 5h |
| 65 | 3.2.5.2.1 | ajouter article | 2h | 2018-04-16 08:36 | 2018-04-16 10:36 | 9 | 2.16d |  | Nicolas | 2h |
| 66 | 3.2.5.2.2 | modif article (optionnel) | 2h | 2018-04-16 08:36 | 2018-04-16 10:36 | 9 | 2.16d |  | Nicolas | 2h |
| 67 | 3.2.5.2.3 | suppr article | 1h | 2018-04-16 08:36 | 2018-04-16 09:36 | 9 | 2.3d |  | Nicolas | 1h |
| 68 | 3.2.6 | **fil d'actu** | 4d | 2018-04-12 09:43 | 2018-04-18 09:43 | 9 | 0d |  |  | 20h |
| 69 | 3.2.6.1 | **Salarié** | 0.86d | 2018-04-17 10:43 | 2018-04-18 08:43 | 9 | 0.14d |  |  | 3h |
| 70 | 3.2.6.1.1 | **Report** | 0.86d | 2018-04-17 10:43 | 2018-04-18 08:43 |  | 0.14d |  |  | 3h |
| 71 | 3.2.6.1.1.1 | photo | 1h | 2018-04-17 10:43 | 2018-04-17 11:43 |  | 0.86d |  | Pierre | 1h |
| 72 | 3.2.6.1.1.2 | event | 1h | 2018-04-17 15:43 | 2018-04-17 16:43 |  | 0.29d |  | Pierre | 1h |
| 73 | 3.2.6.1.1.3 | commentaire | 1h | 2018-04-17 16:43 | 2018-04-18 08:43 |  | 0.14d |  | Pierre | 1h |
| 74 | 3.2.6.2 | **BDE** | 4d | 2018-04-12 09:43 | 2018-04-18 09:43 | 9 | 0d |  |  | 8h |
| 75 | 3.2.6.2.1 | **ajouter un event** | 0.57d | 2018-04-12 09:43 | 2018-04-13 09:43 |  | 3.14d | 0d |  | 4h |
| 76 | 3.2.6.2.1.1 | description | 1h | 2018-04-12 09:43 | 2018-04-12 10:43 |  | 3.57d |  | Pierre | 1h |
| 77 | 3.2.6.2.1.2 | image | 1h | 2018-04-12 10:43 | 2018-04-12 11:43 |  | 3.43d |  | Pierre | 1h |
| 78 | 3.2.6.2.1.3 | date | 1h | 2018-04-12 11:43 | 2018-04-13 08:43 |  | 3.29d |  | Pierre | 1h |
| 79 | 3.2.6.2.1.4 | flag ponctuel/récurrent et payant/gratuit | 1h | 2018-04-13 08:43 | 2018-04-13 09:43 |  | 3.14d |  | Pierre | 1h |
| 80 | 3.2.6.2.2 | **admin les events passés** | 0.14d | 2018-04-18 08:43 | 2018-04-18 09:43 |  | 0d |  |  | 2h |
| 81 | 3.2.6.2.2.1 | photos | 1h | 2018-04-18 08:43 | 2018-04-18 09:43 |  | 0d |  | Pierre | 1h |
| 82 | 3.2.6.2.2.2 | commentaires | 1h | 2018-04-18 08:43 | 2018-04-18 09:43 |  | 0d |  | Pierre | 1h |
| 83 | 3.2.6.2.3 | dl les inscrits sur un évenement | 2h | 2018-04-13 10:43 | 2018-04-13 13:43 |  | 3d |  | Pierre | 2h |

| ID | WBS | Task | Duration | Start | Finish | Predecessors | Total slack | Resources | Work |
| --- | --- | --- | --- | --- | --- | --- | --- | --- | --- |
| 84 | 3.2.6.3 | **étudiant** | 3d | 2018-04-13 13:43 | 2018-04-18 09:43 | 9 | 0d |  | 9h |
| 85 | 3.2.6.3.1 | voir les activités | 2h | 2018-04-13 13:43 | 2018-04-13 15:43 |  | 2.71d | Pierre | 2h |
| 86 | 3.2.6.3.2 | s'inscrire | 2h | 2018-04-13 15:43 | 2018-04-16 08:43 |  | 2.43d | Pierre | 2h |
| 87 | 3.2.6.3.3 | poster des photos | 2h | 2018-04-16 08:43 | 2018-04-16 10:43 |  | 2.14d | Pierre | 2h |
| 88 | 3.2.6.3.4 | like | 1h | 2018-04-18 08:43 | 2018-04-18 09:43 |  | 0d | Pierre | 1h |
| 89 | 3.2.6.3.5 | commenter | 2h | 2018-04-16 10:43 | 2018-04-16 13:43 |  | 1.86d | Pierre | 2h |
